# 物联网系列设备与系统的研发、试点、认证

Schedule from a web Gantt chart, 2024-10-09 to 2025-03-21.
Saturdays and Sundays are off

## Schedule

| ID | WBS | Task | Duration | Start | Finish | Predecessors | Complete | Status |
| --- | --- | --- | --- | --- | --- | --- | --- | --- |
| 2 | 1 | E-maintainance支持南非市场需求 | 1d | 2024-11-21 | 2024-11-21 |  |  |  |
| 3 | 2 | SmartRead支持南非市场需求 11.11 | 1d | 2024-11-11 | 2024-11-11 |  |  |  |
| 4 | 3 | **HES支持南非市场的需求** | 13d | 2024-11-13 | 2024-11-29 |  | 43% |  |
| 5 | 3.1 | **LoRaWAN** | 13d | 2024-11-13 | 2024-11-29 |  | 55% |  |
| 6 | 3.1.1 | 功能开发 | 7d | 2024-11-13 | 2024-11-21 |  | 100% |  |
| 7 | 3.1.2 | 功能测试 | 7d | 2024-11-21 | 2024-11-29 |  | 10% |  |
| 8 | 3.2 | **NB-IoT** | 1d | 2024-11-21 | 2024-11-21 |  |  |  |
| 9 | 3.2.1 | 功能开发 | 1d | 2024-11-21 | 2024-11-21 |  |  |  |
| 10 | 3.2.2 | 功能测试 | 1d | 2024-11-21 | 2024-11-21 |  |  |  |
| 11 | 3.3 | **Sigfox** | 1d | 2024-11-21 | 2024-11-21 |  |  |  |
| 12 | 3.3.1 | 功能开发 | 1d | 2024-11-21 | 2024-11-21 |  |  |  |
| 13 | 3.3.2 | 功能测试 | 1d | 2024-11-21 | 2024-11-21 |  |  |  |
| 14 | 4 | **表计开发与认证** | 118d | 2024-10-09 | 2025-03-21 |  | 26% |  |
| 15 | 4.1 | **表计开发** | 33d | 2024-10-16 | 2024-11-29 |  | 58% | done |
| 16 | 4.1.1 | **LoRa** | 15d | 2024-11-11 | 2024-11-29 |  | 65% | done |
| 17 | 4.1.1.1 | 开发 | 9d | 2024-11-11 | 2024-11-21 |  | 100% | done |
| 18 | 4.1.1.2 | 测试 | 7d | 2024-11-21 | 2024-11-29 |  | 20% | done |
| 19 | 4.1.2 | NB-IoT | 1d | 2024-10-16 | 2024-10-16 |  |  | done |
| 20 | 4.1.3 | Sigfox | 1d | 2024-10-16 | 2024-10-16 |  |  | done |
| 21 | 4.2 | **表计认证** | 118d | 2024-10-09 | 2025-03-21 |  | 23% |  |
| 22 | 4.2.1 | iLAC | 38d | 2024-10-09 | 2024-11-29 |  | 100% | done |
| 23 | 4.2.2 | ICASA认证 | 65d | 2024-12-02 | 2025-02-28 |  |  | waiting |
| 24 | 4.2.3 | Sigfox ready certification | 39d | 2024-12-02 | 2025-01-23 |  |  | waiting |
| 25 | 4.2.4 | STS | 10d | 2024-12-02 | 2024-12-13 |  |  | waiting |
| 26 | 4.2.5 | NRCS认证 | 15d | 2025-03-03 | 2025-03-21 | 23 |  | waiting |
| 27 | 5 | 集成测试 | 1d | 2025-03-10 | 2025-03-10 |  |  |  |

| ID | WBS | Task | Duration | Start | Finish |
| --- | --- | --- | --- | --- | --- |
| 28 | 6 | **各项目试点工作** | 1d | 2024-11-21 | 2024-11-21 |
| 29 | 6.1 | **约堡11.28试点** | 1d | 2024-11-21 | 2024-11-21 |
| 30 | 6.1.1 | 测试能否通过HES调用API传输表计的信息 | 1d | 2024-11-21 | 2024-11-21 |
| 31 | 6.1.2 | 提供Sigfox表的软件版本 | 1d | 2024-11-21 | 2024-11-21 |
| 32 | 6.1.3 | HES的UI进行临时升级 | 1d | 2024-11-21 | 2024-11-21 |
| 33 | 6.1.4 | 隐藏HES的其他租户 | 1d | 2024-11-21 | 2024-11-21 |
| 34 | 6.1.5 | 新增一个inzalo的租户，并为这个租户添加南非的地理组织信息 | 1d | 2024-11-21 | 2024-11-21 |
